# PI_projekt_PickBeer_finalni

Schedule from MS Project, 2014-03-21 to 2014-06-27, costs in kn.
Grim Bee

## Calendars

- Standard: Mon-Fri 09:00-12:00, 18:00-21:00; Sat 16:00-17:00; Sun off. Exceptions (off unless hours are given): 2014-04-20 (Uskrs), 2014-04-21 (Uskršnji ponedjeljak), 2014-05-01 (Praznik rada), 2014-06-19 (Tijelovo).

## Resources

| Resource | Rate | Cost per use |
| --- | --- | --- |
| Gabriel Glogoški | 40 |  |
| Romano Kovač | 40 |  |
| Ivan Pokec | 40 |  |
| Mislav Košćak | 40 |  |
| Boris Levajac | 40 |  |
| Računalo |  | 8 |
| Laptop 1 |  | 10 |
| Laptop 2 |  | 10 |
| Tablet |  | 5 |

## Schedule

| ID | WBS | Task | Type | Duration | Start | Finish | Predecessors | Total slack | Free slack | Constraint | Resources | Work | Cost |
| --- | --- | --- | --- | --- | --- | --- | --- | --- | --- | --- | --- | --- | --- |
| 1 | 1 | **Grim Bee** |  | 52.38d | 2014-03-21 | 2014-06-27 |  | 0d |  |  |  | 1235h | 49,880 |
| 2 | 1.1 | POČETAK PROJEKTA | milestone | 0d | 2014-03-21 | 2014-03-21 |  | 65.72d |  | start no earlier than 2014-03-21 |  |  |  |
| 3 | 1.2 | **Planiranje projekta** |  | 19d | 2014-03-21 | 2014-04-25 |  | 0d |  |  |  | 276h | 11,160 |
| 4 | 1.2.1 | Definiranje projektnog tima |  | 1h | 2014-03-21 | 2014-03-21 |  | 10.5d | 0d | start no earlier than 2014-03-21 | Gabriel Glogoški; Romano Kovač; Ivan Pokec; Mislav Košćak; Boris Levajac | 5h | 200 |
| 5 | 1.2.2 | Sastanak tima |  | 3h | 2014-03-21 | 2014-03-21 | 4 | 10.5d | 0.25d | start no earlier than 2014-03-21 | Gabriel Glogoški; Romano Kovač; Ivan Pokec; Mislav Košćak; Boris Levajac | 15h | 600 |
| 6 | 1.2.3 | **Prijava projekta** |  | 0.12d | 2014-03-22 | 2014-03-22 | 5 | 10.25d | 4.88d |  |  | 5h | 228 |
| 7 | 1.2.3.1 | Opisati problemsku domenu |  | 1h | 2014-03-22 | 2014-03-22 | 5 | 10.25d |  | start no earlier than 2014-03-22 | Gabriel Glogoški; Romano Kovač; Laptop 2 | 2h | 90 |
| 8 | 1.2.3.2 | Opisati zahtjeve za funkcionalnošću prog. proizvoda |  | 1h | 2014-03-22 | 2014-03-22 | 5 | 10.25d |  | start no earlier than 2014-03-22 | Ivan Pokec; Mislav Košćak; Računalo | 2h | 88 |
| 9 | 1.2.3.3 | Popisati korištenu tehnologiju |  | 1h | 2014-03-22 | 2014-03-22 | 5 | 10.25d |  | start no earlier than 2014-03-22 | Boris Levajac; Laptop 1 | 1h | 50 |
| 10 | 1.2.4 | Sastanak - podjela aktivnosti | milestone | 7h | 2014-04-01 | 2014-04-02 | 6 | 5.38d | 0.5d | finish no earlier than 2014-04-02 | Gabriel Glogoški; Romano Kovač; Ivan Pokec; Mislav Košćak; Boris Levajac | 35h | 1,400 |
| 11 | 1.2.5 | **Priprema dokumentacije** |  | 11.88d | 2014-04-03 | 2014-04-25 | 6 | 0d |  |  |  | 216h | 8,732 |
| 12 | 1.2.5.1 | Izrada specifikacija projekta |  | 1d | 2014-04-03 | 2014-04-04 | 10 | 4.88d | 0.38d | finish no earlier than 2014-04-04 | Mislav Košćak; Računalo; Laptop 2 | 8h | 338 |
| 13 | 1.2.5.2 | Izrada projektnog plana u MS Project-u |  | 2d | 2014-04-05 | 2014-04-09 | 12 | 4.5d | 0.38d | start no earlier than 2014-04-05 | Ivan Pokec; Romano Kovač; Laptop 1; Računalo | 32h | 1,298 |
| 14 | 1.2.5.3 | Opisati dizajn sustava |  | 1d | 2014-04-10 | 2014-04-11 | 13 | 4.12d | 2.88d | start no earlier than 2014-04-10 | Gabriel Glogoški; Boris Levajac; Laptop 1 | 16h | 650 |
| 15 | 1.2.5.4 | Provedba projekta |  | 1d | 2014-04-12 | 2014-04-15 | 10 | 2.62d | 1.38d | start no earlier than 2014-04-12 | Gabriel Glogoški; Romano Kovač; Ivan Pokec; Mislav Košćak; Boris Levajac | 40h | 1,600 |
| 16 | 1.2.5.5 | Izrada dokumentacije za 1. fazu |  | 2d | 2014-04-17 | 2014-04-22 | 15, 12, 13, 14 | 1.25d |  | start no earlier than 2014-04-17 | Gabriel Glogoški; Romano Kovač; Ivan Pokec; Mislav Košćak; Boris Levajac; Laptop 1; Računalo; Laptop 2 | 80h | 3,228 |
| 17 | 1.2.5.6 | Dorada dokumentacije |  | 1d | 2014-04-24 | 2014-04-25 | 16 | 0d |  | finish no earlier than 2014-04-25 | Boris Levajac; Gabriel Glogoški; Ivan Pokec; Laptop 1; Mislav Košćak; Računalo; Romano Kovač | 40h | 1,618 |
| 18 | 1.3 | ZAVRŠETAK PLANIRANJA | milestone | 0d | 2014-04-25 | 2014-04-25 | 3 | 0d |  |  |  |  |  |
| 19 | 1.4 | **IZRADA PROJEKTA** |  | 29.38d | 2014-04-25 | 2014-06-20 | 3 | 0d |  |  |  | 799h | 32,292 |
| 20 | 1.4.1 | **Modeliranje** |  | 15.62d | 2014-04-25 | 2014-05-26 | 3 | 0d |  |  |  | 345h | 13,924 |
| 21 | 1.4.1.1 | Analiza sustava |  | 1d | 2014-04-25 | 2014-04-28 | 18 | 0d |  |  | Gabriel Glogoški; Romano Kovač; Laptop 2 | 16h | 650 |
| 22 | 1.4.1.2 | Izrada Use Case dijagrama |  | 2d | 2014-04-28 | 2014-05-02 | 21 | 0d |  |  | Boris Levajac; Laptop 1 | 16h | 650 |
| 23 | 1.4.1.3 | Izrada Activity dijagrama |  | 2d | 2014-05-02 | 2014-05-06 | 22 | 0d |  |  | Gabriel Glogoški; Ivan Pokec; Laptop 1 | 32h | 1,290 |
| 24 | 1.4.1.4 | Izrada Class dijagrama |  | 1d | 2014-05-06 | 2014-05-08 | 23 | 0d |  |  | Boris Levajac; Laptop 2 | 8h | 330 |
| 25 | 1.4.1.5 | Izrada Sequence dijagrama |  | 2d | 2014-05-08 | 2014-05-12 | 24 | 0d |  |  | Gabriel Glogoški; Laptop 2 | 16h | 650 |
| 26 | 1.4.1.6 | Izrada ERA modela |  | 2d | 2014-05-12 | 2014-05-15 | 25 | 0d |  |  | Mislav Košćak; Romano Kovač; Laptop 1; Računalo | 32h | 1,298 |
| 27 | 1.4.1.7 | Sastanak tima |  | 5h | 2014-05-15 | 2014-05-16 | 26 | 0d |  |  | Boris Levajac; Gabriel Glogoški; Ivan Pokec; Mislav Košćak; Romano Kovač; Laptop 2 | 25h | 1,010 |
| 28 | 1.4.1.8 | Izmjena I dorada dijagrama |  | 1d | 2014-05-16 | 2014-05-19 | 27 | 0d |  |  | Boris Levajac; Gabriel Glogoški; Ivan Pokec; Mislav Košćak; Romano Kovač; Laptop 1; Laptop 2; Računalo | 40h | 1,628 |
| 29 | 1.4.1.9 | Modeliranje baze podataka |  | 4d | 2014-05-19 | 2014-05-26 | 28 | 0d |  |  | Boris Levajac; Gabriel Glogoški; Ivan Pokec; Laptop 1; Romano Kovač; Mislav Košćak; Računalo | 160h | 6,418 |
| 30 | 1.4.2 | Završetak modeliranja | milestone | 0d | 2014-05-26 | 2014-05-26 | 20 | 0d |  |  |  |  |  |

| ID | WBS | Task | Type | Duration | Start | Finish | Predecessors | Total slack | Resources | Work | Cost |
| --- | --- | --- | --- | --- | --- | --- | --- | --- | --- | --- | --- |
| 31 | 1.4.3 | **Izrada aplikacije** |  | 13.75d | 2014-05-26 | 2014-06-20 | 20 | 0d |  | 454h | 18,368 |
| 32 | 1.4.3.1 | **Kreiranje baze podataka** |  | 4d | 2014-05-26 | 2014-06-02 | 30 | 0d |  | 64h | 2,598 |
| 33 | 1.4.3.1.1 | Izrada baze podataka |  | 3d | 2014-05-26 | 2014-05-30 |  | 0d | Gabriel Glogoški; Mislav Košćak; Laptop 1; Računalo | 48h | 1,938 |
| 34 | 1.4.3.1.2 | Popunjavanje baze podacima |  | 1d | 2014-05-30 | 2014-06-02 | 33 | 0d | Ivan Pokec; Laptop 1; Boris Levajac; Laptop 2 | 16h | 660 |
| 35 | 1.4.3.2 | **Pisanje koda aplikacije** |  | 5d | 2014-06-02 | 2014-06-11 | 34 | 0d |  | 200h | 8,094 |
| 36 | 1.4.3.2.1 | Izrada sučelja |  | 2d | 2014-06-02 | 2014-06-05 |  | 0d | Boris Levajac; Gabriel Glogoški; Ivan Pokec; Laptop 1; Laptop 2; Mislav Košćak; Računalo; Romano Kovač; Tablet | 80h | 3,233 |
| 37 | 1.4.3.2.2 | Programiranje klasa |  | 2d | 2014-06-05 | 2014-06-09 | 36 | 0d | Boris Levajac; Gabriel Glogoški; Ivan Pokec; Mislav Košćak; Romano Kovač; Laptop 2; Laptop 1; Računalo | 80h | 3,228 |
| 38 | 1.4.3.2.3 | Povezivanje funkcija na bazu podataka |  | 1d | 2014-06-09 | 2014-06-11 | 37 | 0d | Boris Levajac; Gabriel Glogoški; Ivan Pokec; Laptop 1; Laptop 2; Mislav Košćak; Računalo; Romano Kovač; Tablet | 40h | 1,633 |
| 39 | 1.4.3.3 | Testiranje |  | 1d | 2014-06-11 | 2014-06-12 | 38 | 0d | Boris Levajac; Gabriel Glogoški; Ivan Pokec; Mislav Košćak; Romano Kovač; Laptop 1; Laptop 2; Tablet | 40h | 1,625 |
| 40 | 1.4.3.4 | Sastanak tima |  | 6h | 2014-06-12 | 2014-06-13 | 39 | 0d | Boris Levajac; Gabriel Glogoški; Ivan Pokec; Mislav Košćak; Romano Kovač | 30h | 1,200 |
| 41 | 1.4.3.5 | Ispravljanje grešaka i dorada |  | 2d | 2014-06-13 | 2014-06-17 | 40 | 0d | Boris Levajac; Gabriel Glogoški; Ivan Pokec; Mislav Košćak; Romano Kovač; Laptop 1; Laptop 2; Računalo | 80h | 3,228 |
| 42 | 1.4.3.6 | Finalno testiranje aplikacije |  | 1d | 2014-06-18 | 2014-06-20 | 41 | 0d | Boris Levajac; Ivan Pokec; Gabriel Glogoški; Mislav Košćak; Romano Kovač; Laptop 1; Računalo; Tablet | 40h | 1,623 |
| 43 | 1.4.4 | Završetak rada na aplikaciji | milestone | 0d | 2014-06-20 | 2014-06-20 | 31 | 0d |  |  |  |
| 44 | 1.5 | **IZRADA PROJEKTNE DOKUMENTACIJE I PREZENTIRANJE** |  | 4d | 2014-06-20 | 2014-06-27 | 43 | 0d |  | 160h | 6,428 |
| 45 | 1.5.1 | Sastanak tima |  | 6h | 2014-06-20 | 2014-06-23 | 43 | 0d | Boris Levajac; Gabriel Glogoški; Ivan Pokec; Mislav Košćak; Romano Kovač | 30h | 1,200 |
| 46 | 1.5.2 | Pisanje dokumentacije |  | 3d | 2014-06-23 | 2014-06-27 | 45 | 0d | Boris Levajac; Gabriel Glogoški; Ivan Pokec; Mislav Košćak; Romano Kovač; Laptop 2; Računalo | 120h | 4,818 |
| 47 | 1.5.3 | Prezentacija |  | 2h | 2014-06-27 | 2014-06-27 | 46 | 0d | Boris Levajac; Gabriel Glogoški; Ivan Pokec; Mislav Košćak; Romano Kovač; Laptop 1 | 10h | 410 |
| 48 | 1.6 | ZAVRŠETAK RADA NA DOKUMENTACIJI | milestone | 0d | 2014-06-27 | 2014-06-27 | 44 | 0d |  |  |  |
| 49 | 1.7 | ZAVRŠETAK PROJEKTA | milestone | 0d | 2014-06-27 | 2014-06-27 | 48 | 0d |  |  |  |
