# PI_projekt_PickBeer_v4

Schedule from MS Project, 2014-03-21 to 2014-07-04, costs in kn.
Grim Bee

## Calendars

- Standard: Mon-Fri 09:00-12:00, 13:00-17:00; Sat 16:00-17:00; Sun off. Exceptions (off unless hours are given): 2014-04-20 (Uskrs), 2014-04-21 (Uskršnji ponedjeljak), 2014-05-01 (Praznik rada), 2014-06-19 (Tijelovo).

## Resources

| Resource | Rate | Cost per use |
| --- | --- | --- |
| Gabriel Glogoški | 40 |  |
| Romano Kovač | 40 |  |
| Ivan Pokec | 40 |  |
| Mislav Košćak | 40 |  |
| Boris Levajac | 40 |  |
| Računalo |  | 8 |
| Laptop 1 |  | 10 |
| Laptop 2 |  | 10 |
| Tablet |  | 5 |

## Schedule

| ID | WBS | Task | Type | Duration | Start | Finish | Predecessors | Total slack | Free slack | Constraint | Resources | Work | Cost |
| --- | --- | --- | --- | --- | --- | --- | --- | --- | --- | --- | --- | --- | --- |
| 1 | 1 | **Grim Bee** |  | 65.72d | 2014-03-21 | 2014-07-04 |  | 0d |  |  |  | 1725h | 69,404 |
| 2 | 1.1 | POČETAK PROJEKTA | milestone | 0d | 2014-03-21 | 2014-03-21 |  | 65.72d |  | start no earlier than 2014-03-21 |  |  |  |
| 3 | 1.2 | **Planiranje projekta** |  | 22.5d | 2014-03-21 | 2014-04-25 |  | 0d |  |  |  | 276h | 11,160 |
| 4 | 1.2.1 | Definiranje projektnog tima |  | 1h | 2014-03-21 | 2014-03-21 |  | 14d | 0d | start no earlier than 2014-03-21 | Gabriel Glogoški; Romano Kovač; Ivan Pokec; Mislav Košćak; Boris Levajac | 5h | 200 |
| 5 | 1.2.2 | Sastanak tima |  | 3h | 2014-03-21 | 2014-03-21 | 4 | 14d | 0.38d | start no earlier than 2014-03-21 | Gabriel Glogoški; Romano Kovač; Ivan Pokec; Mislav Košćak; Boris Levajac | 15h | 600 |
| 6 | 1.2.3 | **Prijava projekta** |  | 0.12d | 2014-03-22 | 2014-03-22 | 5 | 13.62d | 6.25d |  |  | 5h | 228 |
| 7 | 1.2.3.1 | Opisati problemsku domenu |  | 1h | 2014-03-22 | 2014-03-22 | 5 | 13.62d |  | start no earlier than 2014-03-22 | Gabriel Glogoški; Romano Kovač; Laptop 2 | 2h | 90 |
| 8 | 1.2.3.2 | Opisati zahtjeve za funkcionalnošću prog. proizvoda |  | 1h | 2014-03-22 | 2014-03-22 | 5 | 13.62d |  | start no earlier than 2014-03-22 | Ivan Pokec; Mislav Košćak; Računalo | 2h | 88 |
| 9 | 1.2.3.3 | Popisati korištenu tehnologiju |  | 1h | 2014-03-22 | 2014-03-22 | 5 | 13.62d |  | start no earlier than 2014-03-22 | Boris Levajac; Laptop 1 | 1h | 50 |
| 10 | 1.2.4 | Sastanak - podjela aktivnosti | milestone | 7h | 2014-04-02 | 2014-04-02 | 6 | 7.38d | 0.75d | finish no earlier than 2014-04-02 | Gabriel Glogoški; Romano Kovač; Ivan Pokec; Mislav Košćak; Boris Levajac | 35h | 1,400 |
| 11 | 1.2.5 | **Priprema dokumentacije** |  | 13.62d | 2014-04-03 | 2014-04-25 | 6 | 0d |  |  |  | 216h | 8,732 |
| 12 | 1.2.5.1 | Izrada specifikacija projekta |  | 1d | 2014-04-03 | 2014-04-04 | 10 | 6.62d | 0d | finish no earlier than 2014-04-04 | Mislav Košćak; Računalo; Laptop 2 | 8h | 338 |
| 13 | 1.2.5.2 | Izrada projektnog plana u MS Project-u |  | 2d | 2014-04-05 | 2014-04-09 | 12 | 6.62d | 0.75d | start no earlier than 2014-04-05 | Ivan Pokec; Romano Kovač; Laptop 1; Računalo | 32h | 1,298 |
| 14 | 1.2.5.3 | Opisati dizajn sustava |  | 1d | 2014-04-10 | 2014-04-11 | 13 | 5.88d | 3.5d | start no earlier than 2014-04-10 | Gabriel Glogoški; Boris Levajac; Laptop 1 | 16h | 650 |
| 15 | 1.2.5.4 | Provedba projekta |  | 1d | 2014-04-12 | 2014-04-14 | 10 | 4.12d | 1.75d | start no earlier than 2014-04-12 | Gabriel Glogoški; Romano Kovač; Ivan Pokec; Mislav Košćak; Boris Levajac | 40h | 1,600 |
| 16 | 1.2.5.5 | Izrada dokumentacije za 1. fazu |  | 2d | 2014-04-17 | 2014-04-22 | 15, 12, 13, 14 | 2.38d |  | start no earlier than 2014-04-17 | Gabriel Glogoški; Romano Kovač; Ivan Pokec; Mislav Košćak; Boris Levajac; Laptop 1; Računalo; Laptop 2 | 80h | 3,228 |
| 17 | 1.2.5.6 | Dorada dokumentacije |  | 1d | 2014-04-24 | 2014-04-25 | 16 | 0d |  | finish no earlier than 2014-04-25 | Boris Levajac; Gabriel Glogoški; Ivan Pokec; Laptop 1; Mislav Košćak; Računalo; Romano Kovač | 40h | 1,618 |
| 18 | 1.3 | ŽAVRŠETAK PLANIRANJA | milestone | 0d | 2014-04-25 | 2014-04-25 | 3 | 0d |  |  |  |  |  |
| 19 | 1.4 | **IZRADA PROJEKTA** |  | 37.98d | 2014-04-26 | 2014-06-27 | 3 | 0d |  |  |  | 1239h | 49,816 |
| 20 | 1.4.1 | **Modeliranje** |  | 15.62d | 2014-04-26 | 2014-05-22 | 3 | 0d |  |  |  | 345h | 13,924 |
| 21 | 1.4.1.1 | Analiza sustava |  | 1d | 2014-04-26 | 2014-04-28 | 18 | 0d |  |  | Gabriel Glogoški; Romano Kovač; Laptop 2 | 16h | 650 |
| 22 | 1.4.1.2 | Izrada UseCase dijagrama |  | 2d | 2014-04-29 | 2014-05-02 | 21 | 0d |  |  | Boris Levajac; Laptop 1 | 16h | 650 |
| 23 | 1.4.1.3 | Izrada Activity dijagrama |  | 2d | 2014-05-02 | 2014-05-06 | 22 | 0d |  |  | Gabriel Glogoški; Ivan Pokec; Laptop 1 | 32h | 1,290 |
| 24 | 1.4.1.4 | Izrada Class dijagrama |  | 1d | 2014-05-06 | 2014-05-07 | 23 | 0d |  |  | Boris Levajac; Laptop 2 | 8h | 330 |
| 25 | 1.4.1.5 | Izrada Sequence diagrama |  | 2d | 2014-05-07 | 2014-05-09 | 24 | 0d |  |  | Gabriel Glogoški; Laptop 2 | 16h | 650 |
| 26 | 1.4.1.6 | Izrada ERA modela |  | 2d | 2014-05-09 | 2014-05-13 | 25 | 0d |  |  | Mislav Košćak; Romano Kovač; Laptop 1; Računalo | 32h | 1,298 |
| 27 | 1.4.1.7 | Sastanak tima |  | 5h | 2014-05-14 | 2014-05-14 | 26 | 0d |  |  | Boris Levajac; Gabriel Glogoški; Ivan Pokec; Mislav Košćak; Romano Kovač; Laptop 2 | 25h | 1,010 |
| 28 | 1.4.1.8 | Izmjena I dorada dijagrama |  | 1d | 2014-05-14 | 2014-05-15 | 27 | 0d |  |  | Boris Levajac; Gabriel Glogoški; Ivan Pokec; Mislav Košćak; Romano Kovač; Laptop 1; Laptop 2; Računalo | 40h | 1,628 |
| 29 | 1.4.1.9 | Modeliranje baze podataka |  | 4d | 2014-05-15 | 2014-05-22 | 28 | 0d |  |  | Boris Levajac; Gabriel Glogoški; Ivan Pokec; Laptop 1; Romano Kovač; Mislav Košćak; Računalo | 160h | 6,418 |
| 30 | 1.4.2 | Završetak modeliranja | milestone | 0d | 2014-05-22 | 2014-05-22 | 20 | 0d |  |  |  |  |  |

| ID | WBS | Task | Type | Duration | Start | Finish | Predecessors | Total slack | Resources | Work | Cost |
| --- | --- | --- | --- | --- | --- | --- | --- | --- | --- | --- | --- |
| 31 | 1.4.3 | **Izrada aplikacije** |  | 22.35d | 2014-05-22 | 2014-06-27 | 20 | 0d |  | 894h | 35,892 |
| 32 | 1.4.3.1 | Izrada i popunjavanje baze podataka |  | 5.6d | 2014-05-22 | 2014-05-30 | 30 | 0d | Boris Levajac; Gabriel Glogoški; Ivan Pokec; Laptop 1; Mislav Košćak; Romano Kovač; Računalo; Laptop 2 | 224h | 8,988 |
| 33 | 1.4.3.2 | Pisanje koda |  | 8.4d | 2014-05-30 | 2014-06-12 | 32 | 0d | Boris Levajac; Gabriel Glogoški; Ivan Pokec; Mislav Košćak; Romano Kovač; Laptop 1; Računalo; Laptop 2 | 336h | 13,468 |
| 34 | 1.4.3.3 | Testiranje |  | 2.8d | 2014-06-12 | 2014-06-17 | 33 | 0d | Boris Levajac; Gabriel Glogoški; Ivan Pokec; Mislav Košćak; Romano Kovač; Laptop 1; Laptop 2; Tablet | 112h | 4,505 |
| 35 | 1.4.3.4 | Sastanak tima |  | 6h | 2014-06-17 | 2014-06-18 | 34 | 0d | Boris Levajac; Gabriel Glogoški; Ivan Pokec; Mislav Košćak; Romano Kovač | 30h | 1,200 |
| 36 | 1.4.3.5 | Ispravljanje grešaka i dorada |  | 3.2d | 2014-06-18 | 2014-06-25 | 35 | 0d | Boris Levajac; Gabriel Glogoški; Ivan Pokec; Mislav Košćak; Romano Kovač; Laptop 1; Laptop 2; Računalo | 128h | 5,148 |
| 37 | 1.4.3.6 | Finalno testiranje aplikacije |  | 1.6d | 2014-06-25 | 2014-06-27 | 36 | 0d | Boris Levajac; Ivan Pokec; Gabriel Glogoški; Mislav Košćak; Romano Kovač; Laptop 1; Računalo; Tablet | 64h | 2,583 |
| 38 | 1.4.4 | Završetak rada na aplikaciji | milestone | 0d | 2014-06-27 | 2014-06-27 | 31 | 0d |  |  |  |
| 39 | 1.5 | **IZRADA PROJEKTNE DOKUMENTACIJE I PREZENTIRANJE** |  | 5.25d | 2014-06-27 | 2014-07-04 | 19 | 0d |  | 210h | 8,428 |
| 40 | 1.5.1 | Sastanak tima |  | 6h | 2014-06-27 | 2014-06-27 | 38 | 0d | Boris Levajac; Gabriel Glogoški; Ivan Pokec; Mislav Košćak; Romano Kovač | 30h | 1,200 |
| 41 | 1.5.2 | Pisanje dokumentacije |  | 4.2d | 2014-06-27 | 2014-07-04 | 40 | 0d | Boris Levajac; Gabriel Glogoški; Ivan Pokec; Mislav Košćak; Romano Kovač; Laptop 2; Računalo | 168h | 6,738 |
| 42 | 1.5.3 | Prezentacija |  | 2.4h | 2014-07-04 | 2014-07-04 | 41 | 0d | Boris Levajac; Gabriel Glogoški; Ivan Pokec; Mislav Košćak; Romano Kovač; Laptop 1 | 12h | 490 |
| 43 | 1.6 | ZAVRŠETAK RADA NA DOKUMENTACIJI | milestone | 0d | 2014-07-04 | 2014-07-04 | 39 | 0d |  |  |  |
| 44 | 1.7 | ZAVRŠETAK PROJEKTA | milestone | 0d | 2014-07-04 | 2014-07-04 | 43 | 0d |  |  |  |
